# FML

Schedule from MS Project, 2015-04-06 to 2015-09-30, costs in €.
RevolucionUnattended

## Calendars

- Estándar: Mon-Fri 09:00-13:00, 15:00-19:00; Sat-Sun off.

## Resources

| Resource | Rate |
| --- | --- |
| System analyst | 50 |
| Senior designer | 43.75 |
| Junior designer 1 | 25 |
| Junior designer 2 | 25 |
| System technician | 37.5 |
| Development Equipment | 6.56 |
| Workstation | 1650 |
| Performance Workstation | 3200 |
| Development Environment | 3300 |

## Schedule

| ID | WBS | Task | Type | Duration | Start | Finish | Predecessors | Total slack | Resources | Work | Cost |
| --- | --- | --- | --- | --- | --- | --- | --- | --- | --- | --- | --- |
| 1 | 1 | **Fault Manager Lite Project** |  | 128d | 2015-04-06 | 2015-09-30 |  | 0d | Performance Workstation | 2488h | 115,700 |
| 2 | 1.1 | Buy hardware resources |  | 1d | 2015-04-06 | 2015-04-06 |  | 0d | Workstation [300%]; Performance Workstation; Development Environment [300%] |  | 18,050 |
| 3 | 1.2 | **Increment 1** |  | 69d | 2015-04-07 | 2015-07-10 |  | 0d |  | 1240h | 47,250 |
| 4 | 1.2.1 | Requirements Analysis |  | 30d | 2015-04-07 | 2015-05-18 | 2 | 0d | System analyst | 240h | 12,000 |
| 5 | 1.2.2 | **Design** |  | 8d | 2015-05-19 | 2015-05-28 | 4 | 0d |  | 256h | 9,200 |
| 6 | 1.2.2.1 | Task Management Design |  | 8d | 2015-05-19 | 2015-05-28 |  | 0d | System analyst; Junior designer 1; Junior designer 2; Senior designer | 256h | 9,200 |
| 7 | 1.2.3 | **Coding** |  | 10d | 2015-05-29 | 2015-06-11 | 5 | 0d |  | 240h | 7,500 |
| 8 | 1.2.3.1 | Task Management Coding |  | 10d | 2015-05-29 | 2015-06-11 | 6 | 0d | Junior designer 1; Junior designer 2; Senior designer | 240h | 7,500 |
| 9 | 1.2.4 | **Unit Tests** |  | 5d | 2015-06-12 | 2015-06-18 | 7 | 0d |  | 120h | 3,750 |
| 10 | 1.2.4.1 | Task Management Unit Tests |  | 5d | 2015-06-12 | 2015-06-18 |  | 0d | Junior designer 1; Junior designer 2; Senior designer | 120h | 3,750 |
| 11 | 1.2.5 | **Integration Tests** |  | 8d | 2015-06-19 | 2015-06-30 | 9 | 0d |  | 256h | 9,200 |
| 12 | 1.2.5.1 | Task Management Integration Tests |  | 8d | 2015-06-19 | 2015-06-30 |  | 0d | Junior designer 1; Junior designer 2; Senior designer; System analyst | 256h | 9,200 |
| 13 | 1.2.6 | Deployment |  | 8d | 2015-07-01 | 2015-07-10 | 11 | 0d | System analyst; System technician | 128h | 5,600 |
| 14 | 1.2.7 | Product 1 completed | milestone | 0d | 2015-07-10 | 2015-07-10 | 13 | 0d |  |  |  |
| 15 | 1.3 | **Increment 2** |  | 31d | 2015-07-13 | 2015-08-24 |  | 0d |  | 688h | 25,900 |
| 16 | 1.3.1 | Requirements Analysis |  | 15d | 2015-07-13 | 2015-07-31 | 14 | 0d | System analyst | 120h | 6,000 |
| 17 | 1.3.2 | **Design** |  | 3d | 2015-08-03 | 2015-08-05 | 16 | 0d |  | 128h | 4,600 |
| 18 | 1.3.2.1 | Report System Design |  | 1d | 2015-08-03 | 2015-08-03 |  | 2d | System analyst; Junior designer 1; Junior designer 2; Senior designer | 32h | 1,150 |
| 19 | 1.3.2.2 | Faults History and Statistics Design |  | 3d | 2015-08-03 | 2015-08-05 |  | 0d | System analyst; Junior designer 1; Junior designer 2; Senior designer | 96h | 3,450 |
| 20 | 1.3.3 | **Coding** |  | 4d | 2015-08-06 | 2015-08-11 | 17 | 0d |  | 144h | 4,500 |
| 21 | 1.3.3.1 | Report System Coding |  | 2d | 2015-08-06 | 2015-08-07 |  | 2d | Junior designer 1; Junior designer 2; Senior designer | 48h | 1,500 |
| 22 | 1.3.3.2 | Faults History and Statistics Coding |  | 4d | 2015-08-06 | 2015-08-11 |  | 0d | Junior designer 1; Junior designer 2; Senior designer | 96h | 3,000 |
| 23 | 1.3.4 | **Unit Tests** |  | 2d | 2015-08-12 | 2015-08-13 | 20 | 0d |  | 72h | 2,250 |
| 24 | 1.3.4.1 | Report System Unit Tests |  | 1d | 2015-08-12 | 2015-08-12 |  | 1d | Junior designer 1; Junior designer 2; Senior designer | 24h | 750 |
| 25 | 1.3.4.2 | Faults History and Statistics Unit Tests |  | 2d | 2015-08-12 | 2015-08-13 |  | 0d | Junior designer 1; Junior designer 2; Senior designer | 48h | 1,500 |

| ID | WBS | Task | Type | Duration | Start | Finish | Predecessors | Total slack | Resources | Work | Cost |
| --- | --- | --- | --- | --- | --- | --- | --- | --- | --- | --- | --- |
| 26 | 1.3.5 | **Integration Tests** |  | 3d | 2015-08-14 | 2015-08-18 | 23 | 0d |  | 160h | 5,750 |
| 27 | 1.3.5.1 | Report System Integration Tests |  | 2d | 2015-08-14 | 2015-08-17 |  | 1d | System analyst; Junior designer 1; Junior designer 2; Senior designer | 64h | 2,300 |
| 28 | 1.3.5.2 | Faults History and Statistics Integration Tests |  | 3d | 2015-08-14 | 2015-08-18 |  | 0d | System analyst; Junior designer 1; Junior designer 2; Senior designer | 96h | 3,450 |
| 29 | 1.3.6 | Deployment |  | 4d | 2015-08-19 | 2015-08-24 | 26 | 0d | System analyst; System technician | 64h | 2,800 |
| 30 | 1.3.7 | Product 2 completed | milestone | 0d | 2015-08-24 | 2015-08-24 | 29 | 0d |  |  |  |
| 31 | 1.4 | **Increment3** |  | 27d | 2015-08-25 | 2015-09-30 |  | 0d |  | 560h | 21,300 |
| 32 | 1.4.1 | Requirements Analysis |  | 14d | 2015-08-25 | 2015-09-11 | 30 | 0d | System analyst | 112h | 5,600 |
| 33 | 1.4.2 | **Design** |  | 2d | 2015-09-14 | 2015-09-15 | 32 | 0d |  | 96h | 3,450 |
| 34 | 1.4.2.1 | Notification and Messaging System Design |  | 1d | 2015-09-14 | 2015-09-14 |  | 1d | System analyst; Junior designer 1; Junior designer 2; Senior designer | 32h | 1,150 |
| 35 | 1.4.2.2 | User Management Design |  | 2d | 2015-09-14 | 2015-09-15 |  | 0d | System analyst; Junior designer 1; Junior designer 2; Senior designer | 64h | 2,300 |
| 36 | 1.4.3 | **Coding** |  | 3d | 2015-09-16 | 2015-09-18 | 33 | 0d |  | 120h | 3,750 |
| 37 | 1.4.3.1 | Notification and Messaging System Coding |  | 2d | 2015-09-16 | 2015-09-17 |  | 1d | Junior designer 1; Junior designer 2; Senior designer | 48h | 1,500 |
| 38 | 1.4.3.2 | User Management Coding |  | 3d | 2015-09-16 | 2015-09-18 |  | 0d | Junior designer 1; Junior designer 2; Senior designer | 72h | 2,250 |
| 39 | 1.4.4 | **Unit Tests** |  | 2d | 2015-09-21 | 2015-09-22 | 36 | 0d |  | 72h | 2,250 |
| 40 | 1.4.4.1 | Notification and Messaging System Unit Tests |  | 1d | 2015-09-21 | 2015-09-21 |  | 1d | Junior designer 1; Junior designer 2; Senior designer | 24h | 750 |
| 41 | 1.4.4.2 | User Management Unit Tests |  | 2d | 2015-09-21 | 2015-09-22 |  | 0d | Junior designer 1; Junior designer 2; Senior designer | 48h | 1,500 |
| 42 | 1.4.5 | **Integration Tests** |  | 2d | 2015-09-23 | 2015-09-24 | 39 | 0d |  | 96h | 3,450 |
| 43 | 1.4.5.1 | Notification and Messaging System Integration Tests |  | 1d | 2015-09-23 | 2015-09-23 |  | 1d | System analyst; Junior designer 1; Junior designer 2; Senior designer | 32h | 1,150 |
| 44 | 1.4.5.2 | User Management Integration Tests |  | 2d | 2015-09-23 | 2015-09-24 |  | 0d | System analyst; Junior designer 1; Junior designer 2; Senior designer | 64h | 2,300 |
| 45 | 1.4.6 | Deployment |  | 4d | 2015-09-25 | 2015-09-30 | 42 | 0d | System analyst; System technician | 64h | 2,800 |
| 46 | 1.4.7 | Product 3 completed | milestone | 0d | 2015-09-30 | 2015-09-30 | 45 | 0d |  |  |  |
| 47 | 1.5 | Final Phase | milestone | 0d | 2015-09-30 | 2015-09-30 | 46 | 0d |  |  |  |
